Schedule from MS Project, 2026-03-02 to 2026-07-22, status date 2026-05-15, costs in ₽, A marks actual dates.
16 workers, 50000 rub, 6 months

## Calendars

- Standard: Mon-Fri 08:00-12:00, 13:00-17:00; Sat-Sun off. Exceptions (off unless hours are given): 2026-03-09 (8 march), 2026-04-30 09:00-12:00, 13:00-17:00 (1 may), 2026-05-01 (1 may), 2026-05-08 09:00-12:00, 13:00-17:00 (8 may), 2026-05-11 (11 may), 2026-06-11 09:00-12:00, 13:00-17:00 (11 june), 2026-06-12 (12 june).

## Resources

| Resource | Group | Rate | Cost per use |
| --- | --- | --- | --- |
| Ведущий программист | Программирование | 10 | 100 |
| Программист#1 | Программирование | 7 | 50 |
| Программист#2 | Программирование | 7 | 50 |
| Программист#3 | Программирование | 7 | 50 |
| Программист#4 | Программирование | 7 | 50 |
| Системный аналитик | Анализ | 20 | 300 |
| Художник-дизайнер | Дизайн | 8 | 70 |
| Технический писатель | Документация | 5 | 20 |
| Web-дизайнер | Internet | 7 | 50 |
| 3D аниматор | Дизайн | 8 | 70 |
| Мультимедия-корреспондент | М-медиа | 3 | 20 |
| Наборщик данных#1 | Ввод данных | 2 | 10 |
| Наборщик данных#2 | Ввод данных | 2 | 10 |
| Наборщик данных#3 | Ввод данных | 2 | 10 |
| Наборщик данных#4 | Ввод данных | 2 | 10 |
| Наборщик данных#5 | Ввод данных | 2 | 10 |
| Сервер | Аренда | 2 |  |

## Schedule

| ID | WBS | Task | Type | Duration | Start | Finish | Predecessors | Complete | Remaining | Baseline start | Baseline finish | Baseline duration | Total slack | Free slack | Constraint | Resources | Work | Actual work | Cost | Baseline cost | Actual cost |
| --- | --- | --- | --- | --- | --- | --- | --- | --- | --- | --- | --- | --- | --- | --- | --- | --- | --- | --- | --- | --- | --- |
| 1 | 1 | Начало проекта | milestone | 0d | 2026-03-02 09:00 | 2026-03-02 09:00 |  |  |  | 2026-03-02 09:00 | 2026-03-02 09:00 | 0d | 7d | 0d |  |  |  |  |  |  |  |
| 2 | 2 | **Создание интерфейса** |  | 72.64d | 2026-03-02 09:00 A | 2026-06-17 09:05 | 1 | 33% | 49.01d | 2026-03-02 09:00 | 2026-06-16 14:05 | 72.14d | 0d |  |  |  | 560h | 120h | 5,894 | 5,894 | 1,360 |
| 3 | 2.1 | **Разработка дизайна интерфейса** |  | 25.62d | 2026-03-02 09:00 A | 2026-04-07 15:00 |  | 38% | 16.02d | 2026-03-02 09:00 | 2026-04-07 15:00 | 25.62d | 40.89d | 0d |  |  | 320h | 120h | 2,770 | 2,770 | 1,030 |
| 4 | 2.1.1 | Разработка 2D графических элементов |  | 3w | 2026-03-02 09:00 | 2026-03-24 12:00 |  |  |  | 2026-03-02 09:00 | 2026-03-24 12:00 | 3w | 51.14d | 0d |  | Художник-дизайнер | 120h |  | 1,030 | 1,030 |  |
| 5 | 2.1.2 | Разработка 3D графических элементов |  | 2w | 2026-03-02 09:00 | 2026-03-17 11:00 | 4SS |  |  | 2026-03-02 09:00 | 2026-03-17 11:00 | 2w | 56.26d | 56.62d |  | 3D аниматор | 80h |  | 710 | 710 |  |
| 6 | 2.1.3 | Создание заставки |  | 3w | 2026-03-12 09:00 A | 2026-04-07 15:00 A | 5 | 100% |  | 2026-03-17 11:00 | 2026-04-07 15:00 | 3w |  |  |  | 3D аниматор | 120h | 120h | 1,030 | 1,030 | 1,030 |
| 7 | 2.2 | Программирование интерфейса |  | 1.23w | 2026-06-05 16:05 | 2026-06-17 09:05 | 3, 12 |  |  | 2026-06-05 11:05 | 2026-06-16 14:05 | 1.23w | 0d |  |  | Программист#3; Программист#4; Ведущий программист; Программист#1; Программист#2 | 240h |  | 2,124 | 2,124 |  |
| 8 | 3 | **Построение базы объектов** |  | 80.6d | 2026-03-24 13:00 | 2026-07-20 11:49 |  |  |  | 2026-03-24 13:00 | 2026-07-17 16:49 | 80.1d | 1.84d |  |  | Сервер | 5550.82h |  | 15,291.64 | 15,157.64 |  |
| 9 | 3.1 | Анализ и построение структуры базы объектов |  | 2w | 2026-03-24 13:00 | 2026-04-07 15:00 |  |  |  | 2026-03-24 13:00 | 2026-04-07 15:00 | 2w | 1.84d | 0d |  | Системный аналитик | 80h |  | 1,900 | 1,900 |  |
| 10 | 3.2 | Программирование средств обработки базы объектов |  | 2.07w | 2026-04-07 15:00 | 2026-04-22 08:49 | 9 |  |  | 2026-04-07 15:00 | 2026-04-21 13:49 | 1.97w | 1.84d | 0d | start no earlier than 2026-04-07 15:00 | Программист#3; Программист#4; Программист#1; Программист#2 | 240h |  | 1,880 | 1,880 |  |
| 11 | 3.3 | Наполнение базы объектов |  | 12w | 2026-04-22 08:49 | 2026-07-20 11:49 | 10 |  |  | 2026-04-21 13:49 | 2026-07-17 16:49 | 12w | 1.84d |  |  | Наборщик данных#1; Наборщик данных#2; Наборщик данных#3; Наборщик данных#4; Наборщик данных#5 | 2400h |  | 4,850 | 4,850 |  |
| 12 | 4 | **Создание ядра GIS** |  | 66.51d | 2026-03-02 09:00 A | 2026-06-05 16:05 |  | 5% | 63.47d | 2026-03-02 09:00 | 2026-06-05 11:05 | 66.01d | 0d |  |  |  | 1880h | 40h | 18,898.29 | 18,098.29 | 1,230 |
| 13 | 4.1 | Анализ и проектирование ядра |  | 3w | 2026-03-02 09:00 | 2026-03-24 12:00 |  |  |  | 2026-03-02 09:00 | 2026-03-24 12:00 | 3w | 41.03d | 0d |  | Ведущий программист; Системный аналитик | 240h |  | 4,000 | 4,000 |  |
| 14 | 4.2 | Создание модели ядра |  | 2.02w | 2026-03-24 13:00 | 2026-04-07 13:49 | 13 |  |  | 2026-03-24 13:00 | 2026-04-07 13:49 | 2.02w | 41.03d | 41.47d |  | Ведущий программист; Программист#1; Программист#2; Программист#3; Программист#4 | 400h |  | 3,336.46 | 3,336.46 |  |
| 15 | 4.3 | Тестирование модели ядра |  | 0.6w | 2026-04-07 13:49 A | 2026-04-10 13:49 A | 14 | 100% |  | 2026-04-07 13:49 | 2026-04-10 08:49 | 0.5w |  |  |  | Программист#1; Программист#2 | 40h | 40h | 1,180 | 380 | 1,180 |
| 16 | 4.4 | Создание рабочей версии ядра |  | 7.51w | 2026-04-10 13:49 | 2026-06-05 16:05 | 15 |  |  | 2026-04-10 08:49 | 2026-06-05 11:05 | 7.51w | 0d | 0.43d | start no earlier than 2026-04-10 13:49 | Ведущий программист; Программист#1; Программист#2; Программист#3; Программист#4 | 1200h |  | 9,381.83 | 9,381.83 |  |
| 17 | 5 | Создание мультимедия - наполнения |  | 6w | 2026-04-07 15:00 | 2026-05-22 16:00 | 3 |  |  | 2026-04-07 15:00 | 2026-05-22 16:00 | 6w | 41.32d | 41.25d |  | Мультимедия-корреспондент | 240h |  | 740 | 740 |  |
| 18 | 6 | Создание справочной системы |  | 2w | 2026-06-29 08:00 | 2026-07-15 10:49 | 7 |  |  | 2026-06-29 08:00 | 2026-07-15 10:49 | 2w | 4.96d | 4.9d |  | Технический писатель | 80h |  | 420 | 420 |  |
| 19 | 7 | **Создание руководства пользователя** |  | 18.62d | 2026-06-02 08:05 | 2026-06-29 15:05 | 7FS-10d |  |  | 2026-06-01 13:05 | 2026-06-29 08:05 | 18.38d | 0d |  |  |  | 160h |  | 1,010 | 1,010 |  |
| 20 | 7.1 | Разработка дизайна руководства |  | 1w | 2026-06-02 08:05 | 2026-06-09 11:05 |  |  |  | 2026-06-01 13:05 | 2026-06-08 16:05 | 1w | 0d |  |  | Художник-дизайнер | 40h |  | 390 | 390 |  |
| 21 | 7.2 | Написание руководства пользователя |  | 3w | 2026-06-04 08:05 | 2026-06-29 15:05 | 20SS+2d |  |  | 2026-06-03 13:05 | 2026-06-29 08:05 | 3w | 0d |  |  | Технический писатель | 120h |  | 620 | 620 |  |
| 22 | 8 | **Создание web - сайта и поддержка** |  | 25.38d | 2026-06-04 08:05 | 2026-07-10 13:05 |  |  |  | 2026-06-03 13:05 | 2026-07-09 15:05 | 25.12d | 0d |  |  |  | 248h |  | 2,106 | 2,106 |  |
| 23 | 8.1 | Разработка структуры сайта |  | 1d | 2026-06-04 08:05 | 2026-06-05 09:05 | 21SS |  |  | 2026-06-03 13:05 | 2026-06-04 14:05 | 1d | 0d |  |  | Web-дизайнер | 8h |  | 106 | 106 |  |
| 24 | 8.2 | Разработка дизайна сайта |  | 1.48w | 2026-06-05 09:05 | 2026-06-18 08:05 | 23 |  |  | 2026-06-04 14:05 | 2026-06-17 11:05 | 1.48w | 0d |  |  | 3D аниматор; Web-дизайнер; Художник-дизайнер | 120h |  | 1,110 | 1,110 |  |
| 25 | 8.3 | Наполнение сайта |  | 3w | 2026-06-18 08:05 | 2026-07-10 13:05 | 24 |  |  | 2026-06-17 11:05 | 2026-07-09 15:05 | 3w | 0d | 0.43d |  | Web-дизайнер | 120h |  | 890 | 890 |  |
| 26 | 9 | Тестирование сайта |  | 2.56w | 2026-07-03 13:05 | 2026-07-22 10:31 | 22FS-1w |  |  | 2026-07-02 15:05 | 2026-07-21 10:31 | 2.51w | 0d |  |  | Ведущий программист; Программист#1; Программист#2; Программист#3; Программист#4 | 480h |  | 3,940.28 | 3,940.28 |  |
| 27 | 10 | Сдача сайта в эксплуатацию | milestone | 0d | 2026-07-22 10:31 | 2026-07-22 10:31 | 26 |  |  | 2026-07-21 10:31 | 2026-07-21 10:31 | 0d | 0d | 0.43d |  |  |  |  |  |  |  |

| ID | WBS | Task | Type | Duration | Start | Finish | Baseline start | Baseline finish | Baseline duration | Total slack | Constraint | Resources | Work | Cost | Baseline cost |
| --- | --- | --- | --- | --- | --- | --- | --- | --- | --- | --- | --- | --- | --- | --- | --- |
| 28 | 11 | **Совещание** |  | 95.75d | 2026-03-04 09:00 | 2026-07-22 10:00 | 2026-03-04 09:00 | 2026-07-22 10:00 | 95.75d | 0d |  |  | 147h | 1,281 | 1,281 |
| 29 | 11.1 | Совещание 1 | manual | 1h | 2026-03-04 09:00 | 2026-03-04 10:00 | 2026-03-04 09:00 | 2026-03-04 10:00 | 1h |  | start no earlier than 2026-03-04 09:00 | 3D аниматор; Web-дизайнер; Ведущий программист; Мультимедия-корреспондент; Системный аналитик; Технический писатель; Художник-дизайнер | 7h | 61 | 61 |
| 30 | 11.2 | Совещание 2 | manual | 1h | 2026-03-11 09:00 | 2026-03-11 10:00 | 2026-03-11 09:00 | 2026-03-11 10:00 | 1h |  | start no earlier than 2026-03-11 09:00 | 3D аниматор; Web-дизайнер; Ведущий программист; Мультимедия-корреспондент; Системный аналитик; Технический писатель; Художник-дизайнер | 7h | 61 | 61 |
| 31 | 11.3 | Совещание 3 | manual | 1h | 2026-03-18 09:00 | 2026-03-18 10:00 | 2026-03-18 09:00 | 2026-03-18 10:00 | 1h |  | start no earlier than 2026-03-18 09:00 | 3D аниматор; Web-дизайнер; Ведущий программист; Мультимедия-корреспондент; Системный аналитик; Технический писатель; Художник-дизайнер | 7h | 61 | 61 |
| 32 | 11.4 | Совещание 4 | manual | 1h | 2026-03-25 09:00 | 2026-03-25 10:00 | 2026-03-25 09:00 | 2026-03-25 10:00 | 1h |  | start no earlier than 2026-03-25 09:00 | 3D аниматор; Web-дизайнер; Ведущий программист; Мультимедия-корреспондент; Системный аналитик; Технический писатель; Художник-дизайнер | 7h | 61 | 61 |
| 33 | 11.5 | Совещание 5 | manual | 1h | 2026-04-01 09:00 | 2026-04-01 10:00 | 2026-04-01 09:00 | 2026-04-01 10:00 | 1h |  | start no earlier than 2026-04-01 09:00 | 3D аниматор; Web-дизайнер; Ведущий программист; Мультимедия-корреспондент; Системный аналитик; Технический писатель; Художник-дизайнер | 7h | 61 | 61 |
| 34 | 11.6 | Совещание 6 | manual | 1h | 2026-04-08 09:00 | 2026-04-08 10:00 | 2026-04-08 09:00 | 2026-04-08 10:00 | 1h |  | start no earlier than 2026-04-08 09:00 | 3D аниматор; Web-дизайнер; Ведущий программист; Мультимедия-корреспондент; Системный аналитик; Технический писатель; Художник-дизайнер | 7h | 61 | 61 |
| 35 | 11.7 | Совещание 7 | manual | 1h | 2026-04-15 09:00 | 2026-04-15 10:00 | 2026-04-15 09:00 | 2026-04-15 10:00 | 1h |  | start no earlier than 2026-04-15 09:00 | 3D аниматор; Web-дизайнер; Ведущий программист; Мультимедия-корреспондент; Системный аналитик; Технический писатель; Художник-дизайнер | 7h | 61 | 61 |
| 36 | 11.8 | Совещание 8 | manual | 1h | 2026-04-22 09:00 | 2026-04-22 10:00 | 2026-04-22 09:00 | 2026-04-22 10:00 | 1h |  | start no earlier than 2026-04-22 09:00 | 3D аниматор; Web-дизайнер; Ведущий программист; Мультимедия-корреспондент; Системный аналитик; Технический писатель; Художник-дизайнер | 7h | 61 | 61 |
| 37 | 11.9 | Совещание 9 | manual | 1h | 2026-04-29 09:00 | 2026-04-29 10:00 | 2026-04-29 09:00 | 2026-04-29 10:00 | 1h |  | start no earlier than 2026-04-29 09:00 | 3D аниматор; Web-дизайнер; Ведущий программист; Мультимедия-корреспондент; Системный аналитик; Технический писатель; Художник-дизайнер | 7h | 61 | 61 |
| 38 | 11.10 | Совещание 10 | manual | 1h | 2026-05-06 09:00 | 2026-05-06 10:00 | 2026-05-06 09:00 | 2026-05-06 10:00 | 1h |  | start no earlier than 2026-05-06 09:00 | 3D аниматор; Web-дизайнер; Ведущий программист; Мультимедия-корреспондент; Системный аналитик; Технический писатель; Художник-дизайнер | 7h | 61 | 61 |
| 39 | 11.11 | Совещание 11 | manual | 1h | 2026-05-13 09:00 | 2026-05-13 10:00 | 2026-05-13 09:00 | 2026-05-13 10:00 | 1h |  | start no earlier than 2026-05-13 09:00 | 3D аниматор; Web-дизайнер; Ведущий программист; Мультимедия-корреспондент; Системный аналитик; Технический писатель; Художник-дизайнер | 7h | 61 | 61 |
| 40 | 11.12 | Совещание 12 | manual | 1h | 2026-05-20 09:00 | 2026-05-20 10:00 | 2026-05-20 09:00 | 2026-05-20 10:00 | 1h |  | start no earlier than 2026-05-20 09:00 | 3D аниматор; Web-дизайнер; Ведущий программист; Мультимедия-корреспондент; Системный аналитик; Технический писатель; Художник-дизайнер | 7h | 61 | 61 |
| 41 | 11.13 | Совещание 13 | manual | 1h | 2026-05-27 09:00 | 2026-05-27 10:00 | 2026-05-27 09:00 | 2026-05-27 10:00 | 1h |  | start no earlier than 2026-05-27 09:00 | 3D аниматор; Web-дизайнер; Ведущий программист; Мультимедия-корреспондент; Системный аналитик; Технический писатель; Художник-дизайнер | 7h | 61 | 61 |
| 42 | 11.14 | Совещание 14 | manual | 1h | 2026-06-03 09:00 | 2026-06-03 10:00 | 2026-06-03 09:00 | 2026-06-03 10:00 | 1h |  | start no earlier than 2026-06-03 09:00 | 3D аниматор; Web-дизайнер; Ведущий программист; Мультимедия-корреспондент; Системный аналитик; Технический писатель; Художник-дизайнер | 7h | 61 | 61 |
| 43 | 11.15 | Совещание 15 | manual | 1h | 2026-06-10 09:00 | 2026-06-10 10:00 | 2026-06-10 09:00 | 2026-06-10 10:00 | 1h |  | start no earlier than 2026-06-10 09:00 | 3D аниматор; Web-дизайнер; Ведущий программист; Мультимедия-корреспондент; Системный аналитик; Технический писатель; Художник-дизайнер | 7h | 61 | 61 |
| 44 | 11.16 | Совещание 16 | manual | 1h | 2026-06-17 09:00 | 2026-06-17 10:00 | 2026-06-17 09:00 | 2026-06-17 10:00 | 1h |  | start no earlier than 2026-06-17 09:00 | 3D аниматор; Web-дизайнер; Ведущий программист; Мультимедия-корреспондент; Системный аналитик; Технический писатель; Художник-дизайнер | 7h | 61 | 61 |
| 45 | 11.17 | Совещание 17 | manual | 1h | 2026-06-24 09:00 | 2026-06-24 10:00 | 2026-06-24 09:00 | 2026-06-24 10:00 | 1h |  | start no earlier than 2026-06-24 09:00 | 3D аниматор; Web-дизайнер; Ведущий программист; Мультимедия-корреспондент; Системный аналитик; Технический писатель; Художник-дизайнер | 7h | 61 | 61 |
| 46 | 11.18 | Совещание 18 | manual | 1h | 2026-07-01 09:00 | 2026-07-01 10:00 | 2026-07-01 09:00 | 2026-07-01 10:00 | 1h |  | start no earlier than 2026-07-01 09:00 | 3D аниматор; Web-дизайнер; Ведущий программист; Мультимедия-корреспондент; Системный аналитик; Технический писатель; Художник-дизайнер | 7h | 61 | 61 |
| 47 | 11.19 | Совещание 19 | manual | 1h | 2026-07-08 09:00 | 2026-07-08 10:00 | 2026-07-08 09:00 | 2026-07-08 10:00 | 1h |  | start no earlier than 2026-07-08 09:00 | 3D аниматор; Web-дизайнер; Ведущий программист; Мультимедия-корреспондент; Системный аналитик; Технический писатель; Художник-дизайнер | 7h | 61 | 61 |
| 48 | 11.20 | Совещание 20 | manual | 1h | 2026-07-15 09:00 | 2026-07-15 10:00 | 2026-07-15 09:00 | 2026-07-15 10:00 | 1h |  | start no earlier than 2026-07-15 09:00 | 3D аниматор; Web-дизайнер; Ведущий программист; Мультимедия-корреспондент; Системный аналитик; Технический писатель; Художник-дизайнер | 7h | 61 | 61 |
| 49 | 11.21 | Совещание 21 | manual | 1h | 2026-07-22 09:00 | 2026-07-22 10:00 | 2026-07-22 09:00 | 2026-07-22 10:00 | 1h |  | start no earlier than 2026-07-22 09:00 | 3D аниматор; Web-дизайнер; Ведущий программист; Мультимедия-корреспондент; Системный аналитик; Технический писатель; Художник-дизайнер | 7h | 61 | 61 |
